# Внедрение системы автоматизации

Schedule from MS Project, 2021-12-06 to 2022-02-09, status date 2021-12-06, costs in р., A marks actual dates.
Home

## Calendars

- Стандартный: Mon-Fri 09:00-13:00, 14:00-18:00; Sat-Sun off. Exceptions (off unless hours are given): 2021-12-31 (Новый год), 2022-01-03 to 2022-01-07 (Новогодние каникулы).

## Resources

| Resource | Rate |
| --- | --- |
| Руководитель отдела | 600 |
| Аналитик | 550 |
| Системный администратор | 580 |
| Экономист | 540 |
| Программист | 600 |
| Инженер-электронщик | 520 |
| Менеджер отдела закупок | 460 |
| Компьютеры, оргтехника | 125000 |
| Кабели, комплектующие | 17000 |
| Программное обеспечение | 64000 |

## Schedule

| ID | WBS | Task | Type | Duration | Start | Finish | Predecessors | Complete | Remaining | Baseline start | Baseline finish | Baseline duration | Total slack | Constraint | Resources | Work | Actual work | Cost | Baseline cost | Actual cost |
| --- | --- | --- | --- | --- | --- | --- | --- | --- | --- | --- | --- | --- | --- | --- | --- | --- | --- | --- | --- | --- |
| 1 | 1 | **Внедрение системы автоматизации отдела** |  | 42d? | 2021-12-06 A | 2022-02-09 |  | 26% | 31.25d? | 2021-12-06 | 2022-02-07 | 40d? | 0d |  |  | 520h | 144h | 501,280 | 492,480 | 80,320 |
| 2 | 1.1 | **Предварительное обследование** |  | 14d | 2021-12-06 A | 2021-12-23 |  | 86% | 2d | 2021-12-06 | 2021-12-21 | 12d | 0d |  |  | 112h | 96h | 61,600 | 52,800 | 52,800 |
| 3 | 1.1.1 | Описание функций работников отдела |  | 3d | 2021-12-06 A | 2021-12-08 A |  | 100% |  | 2021-12-06 | 2021-12-08 | 3d |  | start no earlier than 2021-12-06 | Аналитик | 24h | 24h | 13,200 | 13,200 | 13,200 |
| 4 | 1.1.2 | Разработка моделей процессов отдела |  | 7d | 2021-12-09 A | 2021-12-17 A | 3 | 100% |  | 2021-12-09 | 2021-12-15 | 5d |  |  | Аналитик | 56h | 56h | 30,800 | 22,000 | 30,800 |
| 5 | 1.1.3 | Описание задач, подлежащих автоматизации |  | 4d | 2021-12-20 A | 2021-12-23 | 4 | 50% | 2d | 2021-12-16 | 2021-12-21 | 4d | 0d |  | Аналитик | 32h | 16h | 17,600 | 17,600 | 8,800 |
| 6 | 1.2 | **Выбор системы автоматизации отдела** |  | 15d | 2021-12-09 A | 2021-12-29 |  | 47% | 7.94d | 2021-12-09 | 2021-12-27 | 13d | 0d |  |  | 104h | 48h | 59,440 | 59,440 | 27,520 |
| 7 | 1.2.1 | Разработка критериев выбора системы |  | 2d | 2021-12-09 A | 2021-12-10 A | 4SS | 100% |  | 2021-12-09 | 2021-12-10 | 2d |  |  | Руководитель отдела; Системный администратор | 32h | 32h | 18,880 | 18,880 | 18,880 |
| 8 | 1.2.2 | Расчет бюджета автоматизации отдела |  | 2d | 2021-12-09 A | 2021-12-10 A | 7SS | 100% |  | 2021-12-09 | 2021-12-10 | 2d |  |  | Экономист | 16h | 16h | 8,640 | 8,640 | 8,640 |
| 9 | 1.2.3 | Согласование бюджета с руководителем предприятия |  | 0.5d | 2021-12-13 | 2021-12-13 | 8 |  |  | 2021-12-13 | 2021-12-13 | 0.5d | 8.5d |  | Руководитель отдела; Экономист | 8h |  | 4,560 | 4,560 |  |
| 10 | 1.2.4 | Анализ существующих систем автоматизации |  | 2d | 2021-12-24 | 2021-12-27 | 7, 5, 9 |  |  | 2021-12-22 | 2021-12-23 | 2d | 0d |  | Руководитель отдела; Системный администратор | 32h |  | 18,880 | 18,880 |  |
| 11 | 1.2.5 | Выбор системы по заданным критериям |  | 1d | 2021-12-28 | 2021-12-28 | 10 |  |  | 2021-12-24 | 2021-12-24 | 1d | 0d |  | Руководитель отдела | 8h |  | 4,800 | 4,800 |  |
| 12 | 1.2.6 | Закупка системы автоматизации |  | 1d | 2021-12-29 | 2021-12-29 | 11 |  |  | 2021-12-27 | 2021-12-27 | 1d | 0d |  | Менеджер отдела закупок | 8h |  | 3,680 | 3,680 |  |
| 13 | 1.3 | **Внедрение системы автоматизации** |  | 42d? | 2021-12-06 | 2022-02-09 |  |  |  | 2021-12-06 | 2022-02-07 | 40d? | 0d |  |  | 304h |  | 380,240 | 380,240 |  |
| 14 | 1.3.1 | Закупка необходимых технических средств |  | 3d | 2021-12-30 | 2022-01-11 | 9, 12 |  |  | 2021-12-28 | 2021-12-30 | 3d | 0d |  | Менеджер отдела закупок | 24h |  | 11,040 | 11,040 |  |
| 15 | 1.3.2 | Установка ТС на рабочих местах |  | 5d | 2022-01-12 | 2022-01-18 | 14 |  |  | 2022-01-10 | 2022-01-14 | 5d | 3d |  | Компьютеры, оргтехника; Системный администратор | 40h |  | 148,200 | 148,200 |  |
| 16 | 1.3.3 | Интеграция с внутренними системами |  | 8d | 2022-01-12 | 2022-01-21 | 14 |  |  | 2022-01-10 | 2022-01-19 | 8d | 0d |  | Программист | 64h |  | 38,400 | 38,400 |  |
| 17 | 1.3.4 | Прокладка сетей и кабелей |  | 4d | 2022-01-12 | 2022-01-17 | 14 |  |  | 2022-01-10 | 2022-01-13 | 4d | 4d |  | Инженер-электронщик; Кабели, комплектующие | 32h |  | 33,640 | 33,640 |  |
| 18 | 1.3.5 | Установка ПО на рабочих местах |  | 4d | 2022-01-24 | 2022-01-27 | 17, 16, 15 |  |  | 2022-01-20 | 2022-01-25 | 4d | 0d |  | Программист; Программное обеспечение | 32h |  | 83,200 | 83,200 |  |
| 19 | 1.3.6 | Отладка и тестирование ПО |  | 5d | 2022-01-28 | 2022-02-03 | 18 |  |  | 2022-01-26 | 2022-02-01 | 5d | 4d |  | Программист | 40h |  | 24,000 | 24,000 |  |
| 20 | 1.3.7 | Обучение сотрудников работе с ПО |  | 9d | 2022-01-28 | 2022-02-09 | 18 |  |  | 2022-01-26 | 2022-02-07 | 9d | 0d |  | Системный администратор | 72h |  | 41,760 | 41,760 |  |
| 23 | 1.4 | Окончание проекта | milestone | 0d | 2022-02-09 | 2022-02-09 | 20, 19 |  |  | 2022-02-07 | 2022-02-07 | 0d | 0d |  |  |  |  |  |  |  |
