# Внедрение системы автоматизации

Schedule from MS Project, 2021-12-06 to 2022-02-07, status date 2021-12-06, costs in р..
Home

## Calendars

- Стандартный: Mon-Fri 09:00-13:00, 14:00-18:00; Sat-Sun off. Exceptions (off unless hours are given): 2021-12-31 (Новый год), 2022-01-03 to 2022-01-07 (Новогодние каникулы).

## Resources

| Resource | Rate |
| --- | --- |
| Руководитель отдела | 600 |
| Аналитик | 550 |
| Системный администратор | 580 |
| Экономист | 540 |
| Программист | 600 |
| Инженер-электронщик | 520 |
| Менеджер отдела закупок | 460 |
| Компьютеры, оргтехника | 125000 |
| Кабели, комплектующие | 17000 |
| Программное обеспечение | 64000 |

## Schedule

| ID | WBS | Task | Type | Duration | Start | Finish | Predecessors | Total slack | Free slack | Constraint | Resources | Work | Cost |
| --- | --- | --- | --- | --- | --- | --- | --- | --- | --- | --- | --- | --- | --- |
| 1 | 1 | **Внедрение системы автоматизации отдела** |  | 40d | 2021-12-06 | 2022-02-07 |  | 0d |  |  |  | 504h | 492,480 |
| 2 | 1.1 | **Предварительное обследование** |  | 12d | 2021-12-06 | 2021-12-21 |  | 0d |  |  |  | 96h | 52,800 |
| 3 | 1.1.1 | Описание функций работников отдела |  | 3d | 2021-12-06 | 2021-12-08 |  | 0d |  | start no earlier than 2021-12-06 | Аналитик | 24h | 13,200 |
| 4 | 1.1.2 | Разработка моделей процессов отдела |  | 5d | 2021-12-09 | 2021-12-15 | 3 | 0d |  |  | Аналитик | 40h | 22,000 |
| 5 | 1.1.3 | Описание задач, подлежащих автоматизации |  | 4d | 2021-12-16 | 2021-12-21 | 4 | 0d |  |  | Аналитик | 32h | 17,600 |
| 6 | 1.2 | **Выбор системы автоматизации отдела** |  | 13d | 2021-12-09 | 2021-12-27 |  | 0d |  |  |  | 104h | 59,440 |
| 7 | 1.2.1 | Разработка критериев выбора системы |  | 2d | 2021-12-09 | 2021-12-10 | 4SS | 6.5d |  |  | Руководитель отдела; Системный администратор | 32h | 18,880 |
| 8 | 1.2.2 | Расчет бюджета автоматизации отдела |  | 2d | 2021-12-09 | 2021-12-10 | 7SS | 6.5d | 0d |  | Экономист | 16h | 8,640 |
| 9 | 1.2.3 | Согласование бюджета с руководителем предприятия |  | 0.5d | 2021-12-13 | 2021-12-13 | 8 | 6.5d |  |  | Руководитель отдела; Экономист | 8h | 4,560 |
| 10 | 1.2.4 | Анализ существующих систем автоматизации |  | 2d | 2021-12-22 | 2021-12-23 | 7, 5, 9 | 0d |  |  | Руководитель отдела; Системный администратор | 32h | 18,880 |
| 11 | 1.2.5 | Выбор системы по заданным критериям |  | 1d | 2021-12-24 | 2021-12-24 | 10 | 0d |  |  | Руководитель отдела | 8h | 4,800 |
| 12 | 1.2.6 | Закупка системы автоматизации |  | 1d | 2021-12-27 | 2021-12-27 | 11 | 0d |  |  | Менеджер отдела закупок | 8h | 3,680 |
| 13 | 1.3 | **Внедрение системы автоматизации** |  | 24d | 2021-12-28 | 2022-02-07 |  | 0d |  |  |  | 304h | 380,240 |
| 14 | 1.3.1 | Закупка необходимых технических средств |  | 3d | 2021-12-28 | 2021-12-30 | 9, 12 | 0d |  |  | Менеджер отдела закупок | 24h | 11,040 |
| 15 | 1.3.2 | Установка ТС на рабочих местах |  | 5d | 2022-01-10 | 2022-01-14 | 14 | 3d |  |  | Компьютеры, оргтехника; Системный администратор | 40h | 148,200 |
| 16 | 1.3.3 | Разработка БД |  | 8d | 2022-01-10 | 2022-01-19 | 14 | 0d |  |  | Программист | 64h | 38,400 |
| 17 | 1.3.4 | Прокладка сетей и кабелей |  | 4d | 2022-01-10 | 2022-01-13 | 14 | 4d |  |  | Инженер-электронщик; Кабели, комплектующие | 32h | 33,640 |
| 18 | 1.3.5 | Установка ПО на АРМ сотрудников |  | 4d | 2022-01-20 | 2022-01-25 | 17, 16, 15 | 0d |  |  | Программист; Программное обеспечение | 32h | 83,200 |
| 19 | 1.3.6 | Отладка и тестирование ПО |  | 5d | 2022-01-26 | 2022-02-01 | 18 | 4d |  |  | Программист | 40h | 24,000 |
| 20 | 1.3.7 | Обучение сотрудников работе с ПО |  | 9d | 2022-01-26 | 2022-02-07 | 18 | 0d |  |  | Системный администратор | 72h | 41,760 |
| 21 | 1.4 | Окончание проекта | milestone | 0d | 2022-02-07 | 2022-02-07 | 20, 19 | 0d |  |  |  |  |  |
